# IVI CPG + STDP

Schedule from GanttProject, 2023-07-21 to 2024-01-09.
IVI
Holidays every year on 01-01, 01-02, 01-07, 02-15, 02-16, 05-01, 05-02, 11-11

## Calendars

- Project calendar: Mon-Fri working; Sat-Sun off.

## Schedule

| ID | WBS | Task | Type | Duration | Start | Finish | Predecessors |
| --- | --- | --- | --- | --- | --- | --- | --- |
| 1 | 1 | **Computational infrastructure setup** |  | 3d | 2023-07-21 | 2023-07-25 |  |
| 2 | 1.1 | Neuron GPU |  | 3d | 2023-07-21 | 2023-07-25 |  |
| 3 | 1.2 | NEST GPU |  | 3d | 2023-07-21 | 2023-07-25 |  |
| 4 | 1.3 | select NEST / NEURON | milestone | 0d | 2023-07-26 | 2023-07-26 | 3 |
| 5 | 2 | **CPG + STDP modeling** |  | 24d | 2023-07-26 | 2023-08-28 |  |
| 6 | 2.1 | brian2->N migration |  | 2d | 2023-07-26 | 2023-07-27 | 2 |
| 7 | 2.2 | Izhi -> HH migration |  | 3d | 2023-07-26 | 2023-07-28 | 2 |
| 8 | 2.3 | **F-E + STDP** |  | 11d | 2023-07-31 | 2023-08-14 | 7 |
| 9 | 2.3.1 | **F** |  | 7d | 2023-07-31 | 2023-08-08 |  |
| 10 | 2.3.1.1 | + F + birsting |  | 3d | 2023-07-31 | 2023-08-02 |  |
| 11 | 2.3.1.2 | M-F |  | 1d | 2023-08-03 | 2023-08-03 | 10 |
| 12 | 2.3.1.3 | F muscle |  | 2d | 2023-08-04 | 2023-08-07 | 11 |
| 13 | 2.3.1.4 | Ia -> M-F, Ia, F |  | 1d | 2023-08-08 | 2023-08-08 | 12 |
| 14 | 2.3.2 | **E** |  | 4d | 2023-08-09 | 2023-08-14 | 9 |
| 15 | 2.3.2.1 | E, M-E, E muscle, Ia |  | 2d | 2023-08-09 | 2023-08-10 |  |
| 16 | 2.3.2.2 | InF, InE |  | 1d | 2023-08-11 | 2023-08-11 | 15 |
| 17 | 2.3.2.3 | Ia-F, Ia-E |  | 1d | 2023-08-14 | 2023-08-14 | 16 |
| 18 | 2.4 | Testing F-E |  | 12d | 2023-08-01 | 2023-08-16 |  |
| 19 | 2.5 | Left leg | milestone | 0d | 2023-08-17 | 2023-08-17 | 18 |
| 20 | 2.6 | BS + STDP projections |  | 15d | 2023-07-28 | 2023-08-17 |  |
| 21 | 2.7 | **Right leg** |  | 10d | 2023-08-15 | 2023-08-28 |  |
| 22 | 2.7.1 | L-R + STDP |  | 5d | 2023-08-15 | 2023-08-21 | 8 |
| 23 | 2.7.2 | Testing L-R |  | 5d | 2023-08-22 | 2023-08-28 | 22 |
| 24 | 2.8 | Tested CPG + STDP | milestone | 0d | 2023-08-29 | 2023-08-29 | 23 |

| ID | WBS | Task | Type | Duration | Start | Finish | Predecessors |
| --- | --- | --- | --- | --- | --- | --- | --- |
| 25 | 3 | **Hardware infrastructure setup** |  | 20d | 2023-08-15 | 2023-09-11 |  |
| 26 | 3.1 | order soler station |  | 20d | 2023-08-15 | 2023-09-11 |  |
| 27 | 3.2 | order oscilloscope |  | 10d | 2023-08-15 | 2023-08-28 |  |
| 28 | 3.3 | harware infrastructure ready | milestone | 0d | 2023-08-29 | 2023-08-29 | 27 |
| 29 | 4 | **Hardware** |  | 70d | 2023-10-02 | 2024-01-09 |  |
| 30 | 4.1 | **Design** |  | 40d | 2023-10-02 | 2023-11-24 |  |
| 31 | 4.1.1 | PCBs design of on leakage |  | 15d | 2023-10-02 | 2023-10-20 |  |
| 32 | 4.1.2 | PCBs desgin learning feedback |  | 20d | 2023-10-23 | 2023-11-17 | 31 |
| 33 | 4.1.3 | PCB design of refractory period |  | 5d | 2023-11-20 | 2023-11-24 | 32 |
| 34 | 4.2 | **Implementation** |  | 30d | 2023-11-27 | 2024-01-09 | 30 |
| 35 | 4.2.1 | Order PCBs |  | 15d | 2023-11-27 | 2023-12-15 |  |
| 36 | 4.2.2 | Assemble PCBs |  | 15d | 2023-12-18 | 2024-01-09 | 35 |
